# 校准系统_第一阶段_进度计划

Schedule from MS Project, 2020-06-08 to 2020-06-19.

## Calendars

- 标准: Mon-Fri 08:00-12:00, 13:00-17:00; Sat-Sun off.

## Resources

| Resource |
| --- |
| 罗志勇 |
| 彭明东 |

## Schedule

| ID | WBS | Task | Duration | Start | Finish | Predecessors | Total slack | Free slack | Constraint | Resources | Work |
| --- | --- | --- | --- | --- | --- | --- | --- | --- | --- | --- | --- |
| 2 | 1 | **总体设计文档编写** | 9d | 2020-06-08 | 2020-06-18 |  | 1d |  |  |  | 88h |
| 3 | 1.1 | **核心业务部分设计文档** | 5d | 2020-06-08 | 2020-06-12 |  | 5d |  |  |  | 56h |
| 4 | 1.1.1 | 日志、序列号管理部分设计文档 | 1d | 2020-06-08 | 2020-06-08 |  | 8d | 0d | start no earlier than 2020-06-08 | 罗志勇 | 8h |
| 5 | 1.1.2 | 校准命令、标准结果返回命令规范文档 | 1d | 2020-06-09 | 2020-06-09 | 4 | 8d |  | start no earlier than 2020-06-09 | 罗志勇 | 8h |
| 6 | 1.1.3 | 模块自识别、校准子业务设计文档 | 1d | 2020-06-08 | 2020-06-08 |  | 5d | 0d | start no earlier than 2020-06-08 | 彭明东 | 8h |
| 7 | 1.1.4 | 数据采集、结果判定子业务设计文档 | 1d | 2020-06-09 | 2020-06-09 | 6 | 5d | 0d | start no earlier than 2020-06-09 | 彭明东 | 8h |
| 8 | 1.1.5 | 硬件调试、协议对接业务设计文档 | 1d | 2020-06-10 | 2020-06-10 | 7 | 5d | 0d | start no earlier than 2020-06-10 | 彭明东 | 8h |
| 9 | 1.1.6 | 标准源控制、参数管理子业务设计文档 | 1d | 2020-06-11 | 2020-06-11 | 8 | 5d | 0d | start no earlier than 2020-06-11 | 彭明东 | 8h |
| 10 | 1.1.7 | 用户管理、通讯业务设计文档 | 1d | 2020-06-12 | 2020-06-12 | 9 | 5d |  | start no earlier than 2020-06-12 | 彭明东 | 8h |
| 11 | 1.2 | **设计文档完善与确认** | 4d | 2020-06-15 | 2020-06-18 |  | 1d |  |  |  | 32h |
| 12 | 1.2.1 | 非功能特性说明编写 | 1d | 2020-06-15 | 2020-06-15 |  | 1d | 0d | start no earlier than 2020-06-15 | 彭明东 | 8h |
| 13 | 1.2.2 | 总体约束说明编写 | 1d | 2020-06-16 | 2020-06-16 | 12 | 1d | 0d | start no earlier than 2020-06-16 | 彭明东 | 8h |
| 14 | 1.2.3 | 文档检查与修改 | 1d | 2020-06-17 | 2020-06-17 | 13 | 1d | 0d | start no earlier than 2020-06-17 | 彭明东 | 8h |
| 15 | 1.2.4 | 总体设计文档完善与归档 | 1d | 2020-06-18 | 2020-06-18 | 14 | 1d |  | start no earlier than 2020-06-18 | 彭明东 | 8h |
| 17 | 2 | **UI界面设计开发** | 3d | 2020-06-10 | 2020-06-12 |  | 5d |  |  |  | 24h |
| 18 | 2.1 | 主界面原型开发与设计 | 1d | 2020-06-10 | 2020-06-10 |  | 6d | 0d | start no earlier than 2020-06-10 | 罗志勇 | 8h |
| 19 | 2.2 | 校准操作界面、状态显示界面开发 | 1d | 2020-06-11 | 2020-06-11 | 18 | 6d |  | start no earlier than 2020-06-11 | 罗志勇 | 8h |
| 20 | 2.3 | 日志、用户管理界面开发 | 1d | 2020-06-12 | 2020-06-12 | 18 | 5d |  | start no earlier than 2020-06-12 | 罗志勇 | 8h |
| 22 | 3 | **核心业务软件开发** | 5d | 2020-06-15 | 2020-06-19 |  | 0d |  |  |  | 40h |
| 23 | 3.1 | 串口、Modbus通讯 | 1d | 2020-06-15 | 2020-06-15 |  | 0d |  | start no earlier than 2020-06-15 | 罗志勇 | 8h |
| 24 | 3.2 | 标准源控制 | 1d | 2020-06-16 | 2020-06-16 | 23 | 0d |  | start no earlier than 2020-06-16 | 罗志勇 | 8h |
| 25 | 3.3 | 模块自识别 | 1d | 2020-06-17 | 2020-06-17 | 24 | 0d |  |  | 罗志勇 | 8h |
| 26 | 3.4 | 校准业务 | 1d | 2020-06-18 | 2020-06-18 | 25 | 0d |  |  | 罗志勇 | 8h |
| 27 | 3.5 | 执行板数据采集 | 1d | 2020-06-19 | 2020-06-19 | 26 | 0d |  |  | 罗志勇 | 8h |
